# Разработка карты города

Schedule from MS Project, 2023-03-01 to 2023-09-18, costs in ₽.

## Calendars

- Стандартный: Mon-Fri 09:00-13:00, 14:00-18:00; Sat-Sun off. Exceptions (off unless hours are given): 2023-03-07 09:00-13:00, 14:00-17:00 (Сокращенный предпраздничный день), 2023-03-08 (Международный женский день), 2023-05-01 (Праздник Весны и Труда), 2023-05-08 to 2023-05-09 (День Победы), 2023-06-12 (День России).

## Resources

| Resource | Group | Rate | Cost per use |
| --- | --- | --- | --- |
| Ведущий программист | Программирование | 10 | 100 |
| Программист#1 | Программирование | 7 | 50 |
| Программист#2 | Программирование | 7 | 50 |
| Программист#3 | Программирование | 7 | 50 |
| Программист#4 | Программирование | 7 | 50 |
| Системный аналитик | Анализ | 20 | 300 |
| Художник-Дизайнер | Дизайн | 8 | 70 |
| Технический писатель | Документация | 5 | 20 |
| Web-Дизайнер | Internet | 7 | 50 |
| 3D аниматор | Дизайн | 8 | 70 |
| Мультимедиа-корреспондент | М-медиа | 3 | 20 |
| Наборщик данных#1 | Ввод данных | 2 | 10 |
| Наборщик данных#2 | Ввод данных | 2 | 10 |
| Наборщик данных#3 | Ввод данных | 2 | 10 |
| Наборщик данных#4 | Ввод данных | 2 | 10 |
| Наборщик данных#5 | Ввод данных | 2 | 10 |
| Сервер |  | 2 |  |

## Schedule

| ID | WBS | Task | Type | Duration | Start | Finish | Predecessors | Total slack | Free slack | Constraint | Resources | Work | Cost |
| --- | --- | --- | --- | --- | --- | --- | --- | --- | --- | --- | --- | --- | --- |
| 1 | 1 | Начало проекта | milestone | 0w | 2023-03-01 | 2023-03-01 |  | 83.88d | 0d |  |  |  |  |
| 2 | 2 | **Создание интерфейса** |  | 110.88d | 2023-03-01 | 2023-08-09 | 1 | 18d |  |  |  | 560h | 5,550 |
| 3 | 2.1 | **Разработка дизайна интерфейса** |  | 25.88d | 2023-03-01 | 2023-04-06 |  | 83d | 0d |  |  | 320h | 2,770 |
| 4 | 2.1.1 | Разработка 2D графических элементов |  | 3w | 2023-03-01 | 2023-03-23 |  | 83.88d | 0.88d |  | Художник-Дизайнер | 120h | 1,030 |
| 5 | 2.1.2 | Разработка 3D графических элементов |  | 2w | 2023-03-01 | 2023-03-16 | 4SS | 83d | 0d | finish no earlier than 2023-03-16 | 3D аниматор | 80h | 710 |
| 6 | 2.1.3 | Создание заставки |  | 3w | 2023-03-17 | 2023-04-06 | 5 | 83d |  | finish no earlier than 2023-04-06 | 3D аниматор | 120h | 1,030 |
| 7 | 2.2 | Программирование интерфейса |  | 3w | 2023-07-20 | 2023-08-09 | 3, 12 | 18d | 0d | finish no earlier than 2023-08-09 | Программист#3; Программист#4 | 240h | 1,780 |
| 8 | 3 | **Построение базы объектов** |  | 85.88d | 2023-03-01 | 2023-07-05 |  | 53d |  |  | Сервер | 5753h | 15,596 |
| 9 | 3.1 | Анализ и построение структуры базы объектов |  | 2w | 2023-03-01 | 2023-03-16 |  | 53.88d | 0.88d |  | Системный аналитик | 80h | 1,900 |
| 10 | 3.2 | Программирование средств обработки базы объектов |  | 3w | 2023-03-17 | 2023-04-06 | 9 | 53d | 0d | finish no earlier than 2023-04-06 | Программист#3; Программист#4 | 240h | 1,780 |
| 11 | 3.3 | Наполнение базы объектов |  | 12w | 2023-04-07 | 2023-07-05 | 10 | 53d |  | finish no earlier than 2023-07-05 | Наборщик данных#1; Наборщик данных#2; Наборщик данных#3; Наборщик данных#4; Наборщик данных#5 | 2400h | 4,850 |
| 12 | 4 | **Создание ядра GIS** |  | 95.88d | 2023-03-01 | 2023-07-19 |  | 18d | 0d |  |  | 1880h | 18,680 |
| 13 | 4.1 | Анализ и проектирование ядра |  | 3w | 2023-03-01 | 2023-03-23 |  | 18.88d | 0.88d |  | Ведущий программист; Системный аналитик | 240h | 4,000 |
| 14 | 4.2 | Создание модели ядра |  | 5w | 2023-03-24 | 2023-04-27 | 13 | 18d | 0d | finish no earlier than 2023-04-27 | Ведущий программист; Программист#1 | 400h | 3,550 |
| 15 | 4.3 | Тестирование модели ядра |  | 1w | 2023-04-28 | 2023-05-05 | 14 | 18d | 0d | finish no earlier than 2023-05-05 | Программист#1 | 40h | 330 |
| 16 | 4.4 | Создание рабочей версии ядра |  | 10w | 2023-05-10 | 2023-07-19 | 15 | 18d |  | finish no earlier than 2023-07-19 | Ведущий программист; Программист#1; Программист#2 | 1200h | 9,800 |
| 17 | 5 | Создание мультимедиа – наполнения |  | 6w | 2023-04-07 | 2023-05-23 | 3 | 83d |  | finish no earlier than 2023-05-23 | Мультимедиа-корреспондент | 240h | 740 |
| 18 | 6 | Создание справочной системы |  | 2w | 2023-08-10 | 2023-08-23 | 7 | 18d |  | finish no earlier than 2023-08-23 | Технический писатель | 80h | 420 |
| 19 | 7 | **Создание руководства пользователя** |  | 17d | 2023-07-27 | 2023-08-18 | 7FS-10d | 21d |  |  |  | 160h | 1,010 |
| 20 | 7.1 | Разработка дизайна руководства |  | 1w | 2023-07-27 | 2023-08-02 |  | 21d | 0d |  | Художник-Дизайнер | 40h | 390 |
| 21 | 7.2 | Написание руководства пользователя |  | 3w | 2023-07-31 | 2023-08-18 | 20SS+2d | 21d | 0d | finish no earlier than 2023-08-18 | Технический писатель | 120h | 620 |
| 22 | 8 | **Создание web – сайта и поддержка** |  | 21d | 2023-07-31 | 2023-08-28 |  | 0d |  |  |  | 248h | 2,106 |
| 23 | 8.1 | Разработка структуры сайта |  | 1d | 2023-07-31 | 2023-07-31 | 21SS | 0d |  |  | Web-Дизайнер | 8h | 106 |
| 24 | 8.2 | Разработка дизайна сайта |  | 1w | 2023-08-01 | 2023-08-07 | 23 | 0d |  | finish no earlier than 2023-08-07 | 3D аниматор; Web-Дизайнер; Художник-Дизайнер | 120h | 1,110 |
| 25 | 8.3 | Наполнение сайта |  | 3w | 2023-08-08 | 2023-08-28 | 24 | 0d |  | finish no earlier than 2023-08-28 | Web-Дизайнер | 120h | 890 |
| 26 | 9 | Тестирование сайта |  | 4w | 2023-08-22 | 2023-09-18 | 22FS-1w | 0d |  | finish no earlier than 2023-09-18 | Ведущий программист; Программист#1; Программист#2 | 480h | 4,040 |
| 27 | 10 | Сдача сайта в эксплуатацию | milestone | 0w | 2023-09-18 | 2023-09-18 | 26 | 0d |  |  |  |  |  |

Notes:
- 1: Команда разработчиков из 16 человек занимается созданием карты города на основе собственного модуля отображения. Проект должен быть завершен в течение 6 месяцев. Бюджет проекта: 50 000 рублей.
