# rk_01_4_fixed

Schedule from MS Project, 2023-04-03 to 2023-06-16, status date 2023-06-06, costs in ₽, A marks actual dates.

## Calendars

- Стандартный: Mon-Fri 09:00-13:00, 14:00-18:00; Sat-Sun off. Exceptions (off unless hours are given): 2023-05-01 (Праздник Весны и Труда), 2023-05-08 to 2023-05-09 (День Победы), 2023-06-12 (День России).

## Resources

| Resource | Unit | Rate | Cost per use |
| --- | --- | --- | --- |
| Соколов |  | 437.5 |  |
| Соломин |  | 343.75 |  |
| Тимофеев |  | 312.5 |  |
| Яковлева |  | 312.5 |  |
| Петров |  | 468.75 |  |
| Кузнецов |  | 312.5 |  |
| Фомина |  | 250 |  |
| Преподаватели |  | 87.5 |  |
| Программное обеспечение |  | 30000 | 5000 |
| Картриджи для принтера |  | 2500 |  |
| Бумага | шт | 200 |  |

## Schedule

| ID | WBS | Task | Type | Duration | Start | Finish | Predecessors | Complete | Remaining | Baseline start | Baseline finish | Baseline duration | Total slack | Free slack | Resources | Work | Actual work | Cost | Baseline cost | Actual cost |
| --- | --- | --- | --- | --- | --- | --- | --- | --- | --- | --- | --- | --- | --- | --- | --- | --- | --- | --- | --- | --- |
| 1 | 1 | Начало проекта | milestone | 0d | 2023-04-03 A | 2023-04-03 A |  | 100% |  | 2023-04-03 | 2023-04-03 | 0d |  |  |  |  |  |  |  |  |
| 2 | 2 | Установка ПО |  | 15d | 2023-04-04 A | 2023-04-24 A | 1FS+1d | 100% |  | 2023-04-04 | 2023-04-24 | 15d |  |  | Программное обеспечение; Соколов | 120h | 120h | 87,500 | 87,500 | 87,500 |
| 3 | 3 | Обучение персонала |  | 20d | 2023-04-18 A | 2023-05-18 A | 2SS+10d | 100% |  | 2023-04-18 | 2023-05-18 | 20d |  |  | Бумага [3 шт]; Картриджи для принтера; Кузнецов; Петров; Преподаватели; Соломин; Тимофеев; Яковлева; Соколов | 1080h | 1080h | 349,600 | 447,600 | 349,600 |
| 4 | 4 | **Разработка представительских сайтов** |  | 20d | 2023-05-19 A | 2023-06-16 | 3 | 58% | 8.33d | 2023-05-19 | 2023-06-14 | 18d | 0d |  |  | 96h | 56h | 31,000 | 26,000 | 18,055 |
| 5 | 4.1 | **Разработка сайта 1** |  | 15d | 2023-05-19 A | 2023-06-08 |  | 71% | 4.29d | 2023-05-19 | 2023-05-25 | 5d | 0d |  |  | 56h | 40h | 18,000 | 13,000 | 12,855 |
| 6 | 4.1.1 | Разработка дизайна сайта 1 |  | 2d | 2023-05-19 A | 2023-05-22 A |  | 100% |  | 2023-05-19 | 2023-05-22 | 2d |  |  | Кузнецов | 16h | 16h | 5,000 | 5,000 | 5,000 |
| 7 | 4.1.2 | Программирование сайта 1 |  | 5d | 2023-05-23 A | 2023-06-08 | 6 | 60% | 2d | 2023-05-23 | 2023-05-25 | 3d | 0d |  | Тимофеев | 40h | 24h | 12,500 | 7,500 | 7,500 |
| 8 | 4.2 | **Разработка сайта 2** |  | 17d | 2023-05-24 A | 2023-06-16 | 5FS-2d | 40% | 10.2d | 2023-05-24 | 2023-06-14 | 15d | 0d |  |  | 40h | 16h | 13,000 | 13,000 | 5,200 |
| 9 | 4.2.1 | Разработка дизайна сайта 2 |  | 2d | 2023-05-24 A | 2023-05-25 A |  | 100% |  | 2023-05-24 | 2023-05-25 | 2d |  |  | Кузнецов | 16h | 16h | 5,000 | 5,000 | 5,000 |
| 10 | 4.2.2 | Программирование сайта 2 |  | 3d | 2023-06-14 | 2023-06-16 | 9 |  |  | 2023-06-09 | 2023-06-14 | 3d | 0d | 10.33d | Тимофеев | 24h |  | 7,500 | 7,500 |  |
| 11 | 5 | Представительские сайты сосзданы | milestone | 0d | 2023-06-16 | 2023-06-16 | 4 |  |  | 2023-06-14 | 2023-06-14 | 0d | 0d | 10.33d |  |  |  |  |  |  |
| 12 | 6 | **Разработка корпоративного сайта** |  | 19.33d | 2023-05-19 A | 2023-06-16 | 3 | 60% | 7.73d | 2023-05-19 | 2023-06-15 | 18.33d | 0.67d |  |  | 424h | 280h | 144,916.67 | 144,916.67 | 100,920 |
| 13 | 6.1 | Проектирование сайта |  | 5d | 2023-05-19 A | 2023-05-25 A |  | 100% |  | 2023-05-19 | 2023-05-25 | 5d |  |  | Петров; Соколов | 80h | 80h | 36,250 | 36,250 | 36,250 |
| 14 | 6.2 | Программирование сайта |  | 12d | 2023-05-26 A | 2023-06-13 | 13 | 67% | 4d | 2023-05-26 | 2023-06-08 | 10d | 0d |  | Соломин; Яковлева; Тимофеев | 240h | 192h | 78,500 | 78,500 | 62,670 |
| 15 | 6.3 | Наполнение сайта |  | 3d | 2023-06-06 A | 2023-06-09 | 14FS-3d | 33% | 2d | 2023-06-06 | 2023-06-08 | 3d | 0.67d | 0d | Фомина | 24h | 8h | 6,000 | 6,000 | 2,000 |
| 16 | 6.4 | Тестирование сайта |  | 3.33d | 2023-06-13 | 2023-06-16 | 15 |  |  | 2023-06-09 | 2023-06-15 | 3.33d | 0.67d | 0d | Соломин; Яковлева; Фомина | 80h |  | 24,166.67 | 24,166.67 |  |
| 17 | 7 | Сдача сайта заказчику | milestone | 0d | 2023-06-16 | 2023-06-16 | 16 |  |  | 2023-06-15 | 2023-06-15 | 0d | 0.67d | 0d |  |  |  |  |  |  |
